# PROYECTO RECREWEB

Schedule from MS Project, 2022-07-12 to 2024-11-19, costs in $, A marks actual dates.

## Calendars

- Estándar: Mon-Fri 09:00-13:00, 15:00-19:00; Sat-Sun off. Exceptions (off unless hours are given): 2023-05-02 (Fiesta de la empresa), 2024-05-02 (Fiesta de la empresa).

## Resources

| Resource | Rate |
| --- | --- |
| Jefe A | 15 |
| Analista W | 9.38 |
| Analista D | 9.38 |
| Analista P | 11.25 |
| Administrativo | 7.5 |
| Servidor especial |  |
| Soporte a la implantacion |  |
| Transporte |  |

## Schedule

| ID | WBS | Task | Duration | Start | Finish | Total slack | Constraint |
| --- | --- | --- | --- | --- | --- | --- | --- |
| 1 | 1 | **REUNIÓN EJECUTIVOS** | 135.75d | 2022-08-08 09:00 | 2023-02-13 17:00 | 458.8d |  |
| 2 | 1.1 | REUNIÓN EJECUTIVOS 1 | 6h | 2022-08-08 09:00 | 2022-08-08 17:00 | 593.8d | start no earlier than 2022-08-08 09:00 |
| 3 | 1.2 | REUNIÓN EJECUTIVOS 2 | 6h | 2022-09-12 09:00 | 2022-09-12 17:00 | 568.8d | start no earlier than 2022-09-12 09:00 |
| 4 | 1.3 | REUNIÓN EJECUTIVOS 3 | 6h | 2022-10-10 09:00 | 2022-10-10 17:00 | 548.8d | start no earlier than 2022-10-10 09:00 |
| 5 | 1.4 | REUNIÓN EJECUTIVOS 4 | 6h | 2022-11-14 09:00 | 2022-11-14 17:00 | 523.8d | start no earlier than 2022-11-14 09:00 |
| 6 | 1.5 | REUNIÓN EJECUTIVOS 5 | 6h | 2022-12-12 09:00 | 2022-12-12 17:00 | 503.8d | start no earlier than 2022-12-12 09:00 |
| 7 | 1.6 | REUNIÓN EJECUTIVOS 6 | 6h | 2023-01-09 09:00 | 2023-01-09 17:00 | 483.8d | start no earlier than 2023-01-09 09:00 |
| 8 | 1.7 | REUNIÓN EJECUTIVOS 7 | 6h | 2023-02-13 09:00 | 2023-02-13 17:00 | 458.8d | start no earlier than 2023-02-13 09:00 |
| 9 | 2 | **REUNIÓN** | 150.5d | 2022-07-18 09:00 | 2023-02-13 13:00 | 459.05d |  |
| 10 | 2.1 | REUNIÓN 1 | 4h | 2022-07-18 09:00 | 2022-07-18 13:00 | 609.05d | start no earlier than 2022-07-18 09:00 |
| 11 | 2.2 | REUNIÓN 2 | 4h | 2022-08-01 09:00 | 2022-08-01 13:00 | 599.05d | start no earlier than 2022-08-01 09:00 |
| 12 | 2.3 | REUNIÓN 3 | 4h | 2022-08-15 09:00 | 2022-08-15 13:00 | 589.05d | start no earlier than 2022-08-15 09:00 |
| 13 | 2.4 | REUNIÓN 4 | 4h | 2022-08-29 09:00 | 2022-08-29 13:00 | 579.05d | start no earlier than 2022-08-29 09:00 |
| 14 | 2.5 | REUNIÓN 5 | 4h | 2022-09-12 09:00 | 2022-09-12 13:00 | 569.05d | start no earlier than 2022-09-12 09:00 |
| 15 | 2.6 | REUNIÓN 6 | 4h | 2022-09-26 09:00 | 2022-09-26 13:00 | 559.05d | start no earlier than 2022-09-26 09:00 |
| 16 | 2.7 | REUNIÓN 7 | 4h | 2022-10-10 09:00 | 2022-10-10 13:00 | 549.05d | start no earlier than 2022-10-10 09:00 |
| 17 | 2.8 | REUNIÓN 8 | 4h | 2022-10-24 09:00 | 2022-10-24 13:00 | 539.05d | start no earlier than 2022-10-24 09:00 |
| 18 | 2.9 | REUNIÓN 9 | 4h | 2022-11-07 09:00 | 2022-11-07 13:00 | 529.05d | start no earlier than 2022-11-07 09:00 |
| 19 | 2.10 | REUNIÓN 10 | 4h | 2022-11-21 09:00 | 2022-11-21 13:00 | 519.05d | start no earlier than 2022-11-21 09:00 |
| 20 | 2.11 | REUNIÓN 11 | 4h | 2022-12-05 09:00 | 2022-12-05 13:00 | 509.05d | start no earlier than 2022-12-05 09:00 |
| 21 | 2.12 | REUNIÓN 12 | 4h | 2022-12-19 09:00 | 2022-12-19 13:00 | 499.05d | start no earlier than 2022-12-19 09:00 |
| 22 | 2.13 | REUNIÓN 13 | 4h | 2023-01-02 09:00 | 2023-01-02 13:00 | 489.05d | start no earlier than 2023-01-02 09:00 |
| 23 | 2.14 | REUNIÓN 14 | 4h | 2023-01-16 09:00 | 2023-01-16 13:00 | 479.05d | start no earlier than 2023-01-16 09:00 |
| 24 | 2.15 | REUNIÓN 15 | 4h | 2023-01-30 09:00 | 2023-01-30 13:00 | 469.05d | start no earlier than 2023-01-30 09:00 |
| 25 | 2.16 | REUNIÓN 16 | 4h | 2023-02-13 09:00 | 2023-02-13 13:00 | 459.05d | start no earlier than 2023-02-13 09:00 |

| ID | WBS | Task | Type | Duration | Start | Finish | Predecessors | Complete | Remaining | Total slack | Free slack | Resources | Work | Actual work | Cost | Actual cost |
| --- | --- | --- | --- | --- | --- | --- | --- | --- | --- | --- | --- | --- | --- | --- | --- | --- |
| 26 | 3 | **ANALISIS DE LA SITUACIÓN ACTUAL** |  | 31d | 2022-07-12 09:00 A | 2022-08-23 19:00 |  | 13% | 27d | 0d |  |  | 432h | 144h | 4,725 | 1,560 |
| 27 | 3.1 | ESTUDIO DE INFORMES DETALLADOS |  | 8d | 2022-07-12 09:00 A | 2022-07-21 19:00 |  | 50% | 4d | 1d | 0d | Administrativo [50%]; Analista D; Analista P; Analista W; Jefe A | 160h | 144h | 1,680 | 1,560 |
| 28 | 3.2 | DEPURACION Y CARGA DE DATOS ACTUALIZADOS |  | 13d | 2022-07-22 09:00 | 2022-08-09 19:00 | 27 |  |  | 0d |  | Administrativo; Analista D; Analista P; Jefe A [50%] | 192h |  | 2,070 |  |
| 29 | 3.3 | ESTUDIOS DE PRODUCTOS ACTUALES |  | 10d | 2022-08-10 09:00 | 2022-08-23 19:00 | 28 |  |  | 0d |  | Analista W; Jefe A [50%] | 80h |  | 975 |  |
| 30 | 3.4 | ENTREGA DEL INFORME DEL ANALISIS DE LA SITUACIÓN ACTUAL | milestone | 0d | 2022-08-23 19:00 | 2022-08-23 19:00 | 29 |  |  | 0d |  |  |  |  |  |  |
| 31 | 4 | **ANALISIS DEL SISTEMA** |  | 78.42d | 2022-08-24 09:00 | 2022-12-12 12:23 | 26 |  |  | 0d |  |  | 872h |  | 10,125 |  |
| 32 | 4.1 | ESPECIFICACION REQUISITOS NECESARIOS |  | 10d | 2022-08-24 09:00 | 2022-09-06 19:00 |  |  |  | 0d |  | Administrativo [50%]; Analista D; Analista P; Analista W; Jefe A | 200h |  | 2,100 |  |
| 33 | 4.2 | ANALIZAR EL SISTEMA ACTUAL |  | 4d | 2022-09-07 09:00 | 2022-09-12 19:00 | 32 |  |  | 0d |  | Analista D; Analista P; Analista W; Jefe A | 128h |  | 1,440 |  |
| 34 | 4.3 | ANALISIS DE ESTRUCTURA DE DATOS |  | 8d | 2022-09-13 09:00 | 2022-09-22 19:00 | 33 |  |  | 0d |  | Analista D; Jefe A | 128h |  | 1,560 |  |
| 35 | 4.4 | ANALISIS DE PROCESOS | milestone | 0d | 2022-09-22 19:00 | 2022-09-22 19:00 | 34 |  |  | 0d |  |  |  |  |  |  |
| 36 | 4.5 | ANALISIS DEL PROCESO DE OFERTA Y DEMANDA |  | 18.18d | 2022-09-23 09:00 | 2022-10-19 10:27 | 35 |  |  | 0d |  | Analista P; Jefe A [33%] | 96h |  | 1,260 |  |
| 37 | 4.6 | GESTION DE DATOS E INFORMES |  | 12.12d | 2022-10-19 10:27 | 2022-11-04 11:25 | 36 |  |  | 0d |  | Analista D; Jefe A [33%] | 64h |  | 780 |  |
| 38 | 4.7 | COMUNICACIÓN EN WEB |  | 12.12d | 2022-11-04 11:25 | 2022-11-22 12:23 | 37 |  |  | 0d |  | Analista W [33%]; Jefe A | 64h |  | 780 |  |
| 39 | 4.8 | INTERFACES DE USUARIOS | milestone | 0d | 2022-11-22 12:23 | 2022-11-22 12:23 | 38 |  |  | 0d |  |  |  |  |  |  |
| 40 | 4.9 | INTERFACES DE CARGA |  | 2d | 2022-11-22 12:23 | 2022-11-24 12:23 | 39 |  |  | 0d |  | Analista D; Analista W; Jefe A | 48h |  | 540 |  |
| 41 | 4.10 | INTERFACES DE CONSULTA Y RESERVA |  | 6d | 2022-11-24 12:23 | 2022-12-02 12:23 | 40 |  |  | 0d |  | Analista P; Analista W [50%]; Jefe A [50%] | 72h |  | 855 |  |
| 42 | 4.11 | INTERFAZ DE INFORMES |  | 6d | 2022-12-02 12:23 | 2022-12-12 12:23 | 41 |  |  | 0d |  | Analista D; Analista W [50%]; Jefe A [50%] | 72h |  | 810 |  |
| 43 | 5 | **DISEÑO DEL SISTEMA** |  | 440.12d | 2022-12-12 12:23 | 2024-08-21 15:23 | 31 |  |  | 0d |  |  | 1472h |  | 16,155.93 |  |
| 44 | 5.1 | DISEÑO DE LA ESTRUCTURA DE DATOS |  | 60d | 2022-12-12 12:23 | 2023-03-06 12:23 |  |  |  | 0d |  | Administrativo [10%]; Analista D; Jefe A [10%] | 144h |  | 1,530 |  |
| 45 | 5.2 | DISEÑO DEL PROCESO DE CARGA |  | 40.12d | 2023-03-06 12:23 | 2023-05-01 12:23 | 44 |  |  | 0d |  | Administrativo [10%]; Analista D; Jefe A [10%] | 96h |  | 1,020 |  |
| 46 | 5.3 | DISEÑO DEL PROCESO DE CONSULTA |  | 55.62d | 2023-05-01 12:23 | 2023-06-27 12:23 | 45 |  |  | 0d |  | Administrativo [10%]; Analista P; Jefe A [10%] | 96h |  | 1,098 |  |
| 47 | 5.4 | DISEÑO DEL PROCESO DE VENTA |  | 41.5d | 2023-06-27 12:23 | 2023-08-22 15:23 | 46 |  |  | 0d |  | Administrativo [10%]; Analista P; Jefe A [10%] | 96h |  | 1,119.93 |  |
| 48 | 5.5 | DISEÑO DEL PROCESO DE INFORMES |  | 30d | 2023-08-22 15:23 | 2023-10-03 15:23 | 47 |  |  | 0d |  | Administrativo [10%]; Analista D; Analista P; Analista W; Jefe A | 120h |  | 1,314 |  |
| 49 | 5.6 | DISEÑO DEL INTERFAZ DE USUARIO |  | 30d | 2023-10-03 15:23 | 2023-11-14 15:23 | 48 |  |  | 0d |  | Analista W; Jefe A; Administrativo [10%]; Analista D; Analista P | 120h |  | 1,314 |  |
| 50 | 5.7 | DISEÑO DE LA IMPLANTACION WEB |  | 60d | 2023-11-14 15:23 | 2024-02-06 15:23 | 49 |  |  | 0d |  | Administrativo [10%]; Analista D; Analista P; Analista W; Jefe A | 240h |  | 2,628 |  |
| 51 | 5.8 | DISEÑO DEL PLAN DE PRUEBAS |  | 40d | 2024-02-06 15:23 | 2024-04-02 15:23 | 50 |  |  | 0d |  | Administrativo [10%]; Analista D [10%]; Analista P [10%]; Analista W [10%]; Jefe A [10%] | 160h |  | 1,752 |  |
| 52 | 5.9 | DISEÑO DEL PLAN DE IMPLANTACION |  | 50d | 2024-04-02 15:23 | 2024-06-12 15:23 | 51 |  |  | 0d |  | Administrativo [10%]; Analista D [10%]; Analista P [10%]; Analista W [10%]; Jefe A [10%] | 200h |  | 2,190 |  |
| 53 | 5.10 | DISEÑO DEL PLAN DE FORMACIÓN |  | 50d | 2024-06-12 15:23 | 2024-08-21 15:23 | 52 |  |  | 0d |  | Administrativo [10%]; Analista D [10%]; Analista P [10%]; Analista W [10%]; Jefe A | 200h |  | 2,190 |  |

| ID | WBS | Task | Duration | Start | Finish | Predecessors | Total slack | Resources | Work | Cost |
| --- | --- | --- | --- | --- | --- | --- | --- | --- | --- | --- |
| 54 | 6 | **IMPLEMENTACIÓN** | 36d | 2024-08-21 15:23 | 2024-10-10 15:23 | 43 | 0d | Servidor especial [0.1%]; Soporte a la implantacion [0.1%]; Transporte [0.1%] | 1056h | 12,936 |
| 55 | 6.1 | ELABORACION DEL SOFTWARE DE LOS DISTINTOS PROCESOS | 12d | 2024-08-21 15:23 | 2024-09-06 15:23 |  | 0d | Analista D; Analista P; Analista W; Jefe A | 384h | 4,752 |
| 56 | 6.2 | IMPLEMENTACION DE LOS MODULOS DE INTERCONEXION | 8d | 2024-09-06 15:23 | 2024-09-18 15:23 | 55 | 0d | Analista D; Analista P; Analista W; Jefe A | 256h | 3,168 |
| 57 | 6.3 | PRUEBAS | 12d | 2024-09-18 15:23 | 2024-10-04 15:23 | 56 | 0d | Analista D; Analista P; Analista W; Jefe A | 384h | 4,752 |
| 58 | 6.4 | DOCUMENTOS E INFORMES | 4d | 2024-10-04 15:23 | 2024-10-10 15:23 | 57 | 0d | Administrativo | 32h | 264 |
| 59 | 7 | **PRUEBAS, FORMACIÓN E IMPLEMENTACIÓN** | 28d | 2024-10-10 15:23 | 2024-11-19 15:23 | 54 | 0d |  | 944h | 10,812 |
| 60 | 7.1 | GESTION DEL PLAN DE FORMACION | 6d | 2024-10-10 15:23 | 2024-10-18 15:23 |  | 0d | Administrativo; Analista D; Analista P; Analista W; Jefe A | 240h | 2,628 |
| 61 | 7.2 | IMPLANTACION DEL SISTEMA | 14d | 2024-10-18 15:23 | 2024-11-07 15:23 | 60 | 0d | Analista D; Analista P; Analista W; Jefe A | 448h | 5,208 |
| 62 | 7.3 | TAREAS DE PRUEBA DE LOS PRODUCTOS FINALES INSTALADOS | 8d | 2024-11-07 15:23 | 2024-11-19 15:23 | 61 | 0d | Analista D; Analista P; Analista W; Jefe A | 256h | 2,976 |
